# 29561_10193_3312021105942AM813182-v2013

Schedule from MS Project, 2021-03-31 to 2022-03-16.
Sabian Technologies

## Calendars

- Standard: Mon-Fri 08:00-12:00, 13:00-17:00; Sat-Sun off.

## Schedule

| ID | WBS | Task | Duration | Start | Finish | Predecessors | Baseline start | Baseline finish | Baseline duration | Total slack | Free slack | Baseline cost |
| --- | --- | --- | --- | --- | --- | --- | --- | --- | --- | --- | --- | --- |
| 1 | 1 | **Market Assessment** | 51d? | 2021-03-31 | 2021-06-10 |  | 2021-03-31 | 2021-06-10 | 51d? | 0d |  | 27,280 |
| 2 | 1.1 | Evaluate market | 12d? | 2021-03-31 | 2021-04-16 |  | 2021-03-31 | 2021-04-16 | 12d? | 0d |  | 4,800 |
| 3 | 1.2 | Develop Business opportunity | 14d? | 2021-04-16 | 2021-05-06 | 2 | 2021-04-16 | 2021-05-06 | 14d? | 0d |  | 10,080 |
| 4 | 1.3 | Customer preference study | 21d? | 2021-05-06 | 2021-06-04 | 3 | 2021-05-06 | 2021-06-04 | 21d? | 0d |  | 8,400 |
| 5 | 1.4 | Business evaluation (NPV, etc.) | 4d? | 2021-06-04 | 2021-06-10 | 4 | 2021-06-04 | 2021-06-10 | 4d? | 0d |  | 4,000 |
| 6 | 2 | **Procurement** | 80d? | 2021-10-15 | 2022-02-04 |  | 2021-10-15 | 2022-02-04 | 80d? | 3.5d |  | 12,200 |
| 7 | 2.1 | Identify vendors | 7d? | 2021-10-15 | 2021-10-26 | 26, 73 | 2021-10-15 | 2021-10-26 | 7d? | 11d |  | 2,800 |
| 8 | 2.2 | Develop and Issue RFQ | 6d? | 2021-10-15 | 2021-10-25 | 73, 26 | 2021-10-15 | 2021-10-25 | 6d? | 12d |  | 2,400 |
| 9 | 2.3 | Issue sample (production equivalent) | 5d? | 2021-11-10 | 2021-11-17 | 26, 7, 8, 74 | 2021-11-10 | 2021-11-17 | 5d? | 0d |  | 3,000 |
| 10 | 2.4 | Assess RFQ responses and select vendors | 10d? | 2022-01-21 | 2022-02-04 | 78, 14 | 2022-01-21 | 2022-02-04 | 10d? | 3.5d |  | 4,000 |
| 11 | 3 | **Supplier Quality** | 47d? | 2021-11-17 | 2022-01-21 |  | 2021-11-17 | 2022-01-21 | 47d? | 0d |  | 14,400 |
| 12 | 3.1 | Perform supplier process capability | 14d? | 2021-11-17 | 2021-12-07 | 9 | 2021-11-17 | 2021-12-07 | 14d? | 0d |  | 5,600 |
| 13 | 3.2 | Approve sample parts | 8d? | 2021-12-07 | 2021-12-17 | 12, 75 | 2021-12-07 | 2021-12-17 | 8d? | 7d |  | 4,800 |
| 14 | 3.3 | Qualify Supplier | 10d? | 2022-01-07 | 2022-01-21 | 77, 13 | 2022-01-07 | 2022-01-21 | 10d? | 0d |  | 4,000 |
| 15 | 4 | **Design** | 65d? | 2021-06-10 | 2021-09-09 |  | 2021-06-10 | 2021-09-09 | 65d? | 0d |  | 28,800 |
| 16 | 4.1 | Design and development plan | 6d? | 2021-06-10 | 2021-06-18 | 5, 69 | 2021-06-10 | 2021-06-18 | 6d? | 0d |  | 2,400 |
| 17 | 4.2 | Design specs. | 22d? | 2021-06-18 | 2021-07-20 | 16 | 2021-06-18 | 2021-07-20 | 22d? | 0d |  | 8,800 |
| 18 | 4.3 | Identify testing requirements | 10d? | 2021-07-20 | 2021-08-03 | 17, 70, 50 | 2021-07-20 | 2021-08-03 | 10d? | 8d | 0d | 4,000 |
| 19 | 4.4 | Risk analysis | 10d? | 2021-08-03 | 2021-08-17 | 18 | 2021-08-03 | 2021-08-17 | 10d? | 8d |  | 10,000 |
| 20 | 4.5 | Design labeling | 5d? | 2021-08-27 | 2021-09-03 | 19, 71 | 2021-08-27 | 2021-09-03 | 5d? | 0d |  | 2,000 |
| 21 | 4.6 | Approve design | 4d? | 2021-09-03 | 2021-09-09 | 20 | 2021-09-03 | 2021-09-09 | 4d? | 0d |  | 1,600 |
| 22 | 5 | **Engineering** | 93d? | 2021-09-09 | 2022-01-18 |  | 2021-09-09 | 2022-01-18 | 93d? | 0d |  | 35,200 |
| 23 | 5.1 | Initial engineering specs. | 5d? | 2021-09-09 | 2021-09-16 | 21 | 2021-09-09 | 2021-09-16 | 5d? | 0d |  | 2,000 |
| 24 | 5.2 | Design verification activities | 7d? | 2021-09-16 | 2021-09-27 | 23, 72 | 2021-09-16 | 2021-09-27 | 7d? | 0d |  | 4,200 |
| 25 | 5.3 | Verification design review | 4d? | 2021-09-27 | 2021-10-01 | 24 | 2021-09-27 | 2021-10-01 | 4d? | 0d |  | 1,600 |
| 26 | 5.4 | Release pre-production specifications | 10d? | 2021-10-01 | 2021-10-15 | 25 | 2021-10-01 | 2021-10-15 | 10d? | 0d |  | 4,000 |
| 27 | 5.5 | Build functional model | 18d? | 2021-10-15 | 2021-11-10 | 26, 73 | 2021-10-15 | 2021-11-10 | 18d? | 0d |  | 10,800 |
| 28 | 5.6 | Design validation activities | 5d? | 2021-12-07 | 2021-12-14 | 75, 27, 12 | 2021-12-07 | 2021-12-14 | 5d? | 10d |  | 2,000 |
| 29 | 5.7 | Validation design review | 4d? | 2021-12-28 | 2022-01-03 | 28, 76 | 2021-12-28 | 2022-01-03 | 4d? | 0d |  | 4,000 |
| 30 | 5.8 | Approve model design | 4d? | 2022-01-03 | 2022-01-07 | 29 | 2022-01-03 | 2022-01-07 | 4d? | 0d |  | 2,400 |
| 31 | 5.9 | Design transfer activities | 7d? | 2022-01-07 | 2022-01-18 | 30, 36, 77 | 2022-01-07 | 2022-01-18 | 7d? | 0d |  | 4,200 |

| ID | WBS | Task | Duration | Start | Finish | Predecessors | Baseline start | Baseline finish | Baseline duration | Total slack | Free slack | Baseline cost |
| --- | --- | --- | --- | --- | --- | --- | --- | --- | --- | --- | --- | --- |
| 32 | 6 | **Engineering Quality** | 70d? | 2021-10-15 | 2022-01-21 |  | 2021-10-15 | 2022-01-21 | 70d? | 0d |  | 16,600 |
| 33 | 6.1 | Evaluate design specifications | 10d? | 2021-10-15 | 2021-10-29 | 73, 26 | 2021-10-15 | 2021-10-29 | 10d? | 8d |  | 4,000 |
| 34 | 6.2 | Develop testing protocol for prototype | 8d? | 2021-11-10 | 2021-11-22 | 26, 33, 74 | 2021-11-10 | 2021-11-22 | 8d? | 11d |  | 3,200 |
| 35 | 6.3 | Test prototype | 10d? | 2021-12-07 | 2021-12-21 | 75, 34, 27, 12 | 2021-12-07 | 2021-12-21 | 10d? | 5d |  | 4,000 |
| 36 | 6.4 | Evaluate results of tests and identify weaknesses | 6d? | 2021-12-28 | 2022-01-05 | 76, 35 | 2021-12-28 | 2022-01-05 | 6d? | 2d |  | 2,400 |
| 37 | 6.5 | Product release meetings | 3d? | 2022-01-18 | 2022-01-21 | 31, 36, 30 | 2022-01-18 | 2022-01-21 | 3d? | 0d |  | 3,000 |
| 38 | 7 | **Manufacturing** | 68.5d? | 2021-12-07 | 2022-03-11 |  | 2021-12-07 | 2022-03-11 | 68.5d? | 0d |  | 22,600 |
| 39 | 7.1 | Process engineering plan | 15d? | 2021-12-07 | 2021-12-28 | 27, 12, 75 | 2021-12-07 | 2021-12-28 | 15d? | 0d |  | 6,000 |
| 40 | 7.2 | Develop production plan | 6d? | 2022-01-07 | 2022-01-17 | 77, 36, 29, 39 | 2022-01-07 | 2022-01-17 | 6d? | 4d |  | 2,400 |
| 41 | 7.3 | Develop production control plan | 8.5d? | 2022-01-21 | 2022-02-02 | 40, 14, 78 | 2022-01-21 | 2022-02-02 | 8.5d? | 0d |  | 3,400 |
| 42 | 7.4 | Approve production parts | 5d? | 2022-02-02 | 2022-02-09 | 41 | 2022-02-02 | 2022-02-09 | 5d? | 0d |  | 2,000 |
| 43 | 7.5 | Contracting for deliveries | 8d? | 2022-02-09 | 2022-02-21 | 42, 10 | 2022-02-09 | 2022-02-21 | 8d? | 0d |  | 3,200 |
| 44 | 7.6 | Submit production purchase order | 2d? | 2022-02-21 | 2022-02-23 | 43, 79 | 2022-02-21 | 2022-02-23 | 2d? | 0d |  | 800 |
| 45 | 7.7 | Production pilot test | 5d? | 2022-02-23 | 2022-03-02 | 44, 37 | 2022-02-23 | 2022-03-02 | 5d? | 0d |  | 2,000 |
| 46 | 7.8 | Debugging production system | 4d? | 2022-03-02 | 2022-03-08 | 45 | 2022-03-02 | 2022-03-08 | 4d? | 0d |  | 1,600 |
| 47 | 7.9 | Production release | 3d? | 2022-03-08 | 2022-03-11 | 46 | 2022-03-08 | 2022-03-11 | 3d? | 0d |  | 1,200 |
| 48 | 8 | **Commercialization** | 199.5d? | 2021-06-10 | 2022-03-16 |  | 2021-06-10 | 2022-03-16 | 199.5d? | 0d |  | 39,560 |
| 49 | 8.1 | Develop preliminary marketing plan | 5d? | 2021-06-10 | 2021-06-17 | 5, 69 | 2021-06-10 | 2021-06-17 | 5d? | 8d | 0d | 3,600 |
| 50 | 8.2 | Develop marketing program | 15d? | 2021-06-17 | 2021-07-08 | 49 | 2021-06-17 | 2021-07-08 | 15d? | 8d |  | 10,800 |
| 51 | 8.3 | Train sales team | 22d? | 2021-07-20 | 2021-08-19 | 50, 70 | 2021-07-20 | 2021-08-19 | 22d? | 6d |  | 8,800 |
| 52 | 8.4 | Advertising campaign | 28d? | 2021-07-20 | 2021-08-27 | 70, 50 | 2021-07-20 | 2021-08-27 | 28d? | 0d |  | 11,200 |
| 53 | 8.5 | Show functional model at trade show | 3d? | 2021-12-07 | 2021-12-10 | 50, 75, 12, 27 | 2021-12-07 | 2021-12-10 | 3d? | 12d |  | 2,160 |
| 54 | 8.6 | Product launch | 3d? | 2022-03-11 | 2022-03-16 | 47, 51, 52, 53 | 2022-03-11 | 2022-03-16 | 3d? | 0d |  | 3,000 |
| 55 | 9 | **Project Management** | 243.5d? | 2021-03-31 | 2022-03-07 |  | 2021-03-31 | 2022-03-07 | 243.5d? | 7d |  | 136,000 |
| 56 | 9.1 | Project Management Period 1 | 25d? | 2021-03-31 | 2021-05-05 |  | 2021-03-31 | 2021-05-05 | 25d? | 26d |  | 25,000 |
| 57 | 9.2 | Project Management Period 2 | 14d? | 2021-06-10 | 2021-06-30 | 56, 69 | 2021-06-10 | 2021-06-30 | 14d? | 14d |  | 14,000 |
| 58 | 9.3 | Project Management Period 3 | 14d? | 2021-07-20 | 2021-08-09 | 70, 57 | 2021-07-20 | 2021-08-09 | 14d? | 14d |  | 14,000 |
| 59 | 9.4 | Project Management Period 4 | 13d? | 2021-08-27 | 2021-09-15 | 58, 71 | 2021-08-27 | 2021-09-15 | 13d? | 1d |  | 13,000 |
| 60 | 9.5 | Project Management Period 5 | 15d? | 2021-09-16 | 2021-10-07 | 72, 59 | 2021-09-16 | 2021-10-07 | 15d? | 6d |  | 15,000 |
| 61 | 9.6 | Project Management Period 6 | 9d? | 2021-10-15 | 2021-10-28 | 60, 73 | 2021-10-15 | 2021-10-28 | 9d? | 9d |  | 9,000 |
| 62 | 9.7 | Project Management Period 7 | 11d? | 2021-11-10 | 2021-11-25 | 74, 61 | 2021-11-10 | 2021-11-25 | 11d? | 8d |  | 11,000 |
| 63 | 9.8 | Project Management Period 8 | 3d? | 2021-12-07 | 2021-12-10 | 62, 75 | 2021-12-07 | 2021-12-10 | 3d? | 12d |  | 3,000 |
| 64 | 9.9 | Project Management Period 9 | 4d? | 2021-12-28 | 2022-01-03 | 76, 63 | 2021-12-28 | 2022-01-03 | 4d? | 4d |  | 4,000 |
| 65 | 9.10 | Project Management Period 10 | 5d? | 2022-01-07 | 2022-01-14 | 64, 77 | 2022-01-07 | 2022-01-14 | 5d? | 5d |  | 5,000 |
| 66 | 9.11 | Project Management Period 11 | 13d? | 2022-01-21 | 2022-02-09 | 78, 65 | 2022-01-21 | 2022-02-09 | 13d? | 8.5d |  | 13,000 |
| 67 | 9.12 | Project Management Period 12 | 10d? | 2022-02-21 | 2022-03-07 | 66, 79 | 2022-02-21 | 2022-03-07 | 10d? | 7d |  | 10,000 |

| ID | WBS | Task | Type | Duration | Start | Finish | Predecessors | Baseline start | Baseline finish | Baseline duration | Total slack | Baseline cost |
| --- | --- | --- | --- | --- | --- | --- | --- | --- | --- | --- | --- | --- |
| 68 | 10 | **Milestones** |  | 199.5d? | 2021-06-10 | 2022-03-16 |  | 2021-06-10 | 2022-03-16 | 199.5d? | 0d | 25,000 |
| 69 | 10.1 | Milestone 1 | milestone | 0d? | 2021-06-10 | 2021-06-10 | 56, 5 | 2021-06-10 | 2021-06-10 | 0d? | 0d | 3,125 |
| 70 | 10.2 | Milestone 2 | milestone | 0d? | 2021-07-20 | 2021-07-20 | 17, 50, 57 | 2021-07-20 | 2021-07-20 | 0d? | 0d | 3,125 |
| 71 | 10.3 | Milestone 3 | milestone | 0d? | 2021-08-27 | 2021-08-27 | 58, 52, 51, 19 | 2021-08-27 | 2021-08-27 | 0d? | 0d | 3,125 |
| 72 | 10.4 | Milestone 4 | milestone | 0d? | 2021-09-16 | 2021-09-16 | 23, 59 | 2021-09-16 | 2021-09-16 | 0d? | 0d | 3,125 |
| 73 | 10.5 | Milestone 5 | milestone | 0d? | 2021-10-15 | 2021-10-15 | 60, 26 | 2021-10-15 | 2021-10-15 | 0d? | 0d | 3,125 |
| 74 | 10.6 | Milestone 6 | milestone | 0d? | 2021-11-10 | 2021-11-10 | 27, 33, 8, 7, 61 | 2021-11-10 | 2021-11-10 | 0d? | 0d | 3,125 |
| 75 | 10.7 | Milestone 7 | milestone | 0d? | 2021-12-07 | 2021-12-07 | 62, 12, 34 | 2021-12-07 | 2021-12-07 | 0d? | 0d | 3,125 |
| 76 | 10.8 | Milestone 8 | milestone | 0d? | 2021-12-28 | 2021-12-28 | 28, 39, 13, 63, 53, 35 | 2021-12-28 | 2021-12-28 | 0d? | 0d | 3,125 |
| 77 | 10.9 | Milestone 9 | milestone | 0d? | 2022-01-07 | 2022-01-07 | 64, 36, 30 | 2022-01-07 | 2022-01-07 | 0d? | 0d |  |
| 78 | 10.10 | Milestone 10 | milestone | 0d? | 2022-01-21 | 2022-01-21 | 40, 37, 14, 65 | 2022-01-21 | 2022-01-21 | 0d? | 0d |  |
| 79 | 10.11 | Milestone 11 | milestone | 0d? | 2022-02-21 | 2022-02-21 | 66, 43 | 2022-02-21 | 2022-02-21 | 0d? | 0d |  |
| 80 | 10.12 | Milestone 12 | milestone | 0d? | 2022-03-16 | 2022-03-16 | 67, 54 | 2022-03-16 | 2022-03-16 | 0d? | 0d |  |
