# 29561_10193_3312021105942AM813182-v2013

Schedule from MS Project, 2021-03-31 to 2022-02-09, costs in $, A marks actual dates.
Sabian Technologies

## Calendars

- Standard: Mon-Fri 08:00-12:00, 13:00-17:00; Sat-Sun off.

## Resources

| Resource | Rate |
| --- | --- |
| Yukio Ashida | 97.5 |
| Kurt Zollinger | 62.5 |
| Kelly Sauseda | 55.25 |
| Tom Bechur | 68 |
| Jovanna Soto | 75 |
| Operations Specialist | 50 |
| Lance Portier | 60.25 |
| Darryl Sandefur | 55 |
| George Olmos | 48 |
| Norman Micheals | 50 |

## Schedule

| ID | WBS | Task | Duration | Start | Finish | Predecessors | Complete | Remaining | Baseline start | Baseline finish | Baseline duration | Total slack | Resources | Work | Actual work | Cost | Baseline cost | Actual cost |
| --- | --- | --- | --- | --- | --- | --- | --- | --- | --- | --- | --- | --- | --- | --- | --- | --- | --- | --- |
| 1 | 1 | **Market Assessment** | 29.26d | 2021-03-31 A | 2021-05-11 A |  | 100% |  | 2021-03-31 | 2021-05-05 | 25.5d? |  |  | 468.16h | 468.16h | 37,452.8 | 32,844 | 37,452.8 |
| 2 | 1.1 | Evaluate market | 6.69d | 2021-03-31 A | 2021-04-08 A |  | 100% |  | 2021-03-31 | 2021-04-08 | 6d? |  | Kurt Zollinger; Yukio Ashida | 107.04h | 107.04h | 8,563.2 | 7,728 | 8,563.2 |
| 3 | 1.2 | Develop Business opportunity | 8.06d | 2021-04-08 A | 2021-04-20 A | 2 | 100% |  | 2021-04-08 | 2021-04-19 | 7d? |  | Kurt Zollinger; Yukio Ashida | 128.96h | 128.96h | 10,316.8 | 9,016 | 10,316.8 |
| 4 | 1.3 | Customer preference study | 12.13d | 2021-04-20 A | 2021-05-07 A | 3 | 100% |  | 2021-04-19 | 2021-05-03 | 10.5d? |  | Kurt Zollinger; Yukio Ashida | 194.08h | 194.08h | 15,526.4 | 13,524 | 15,526.4 |
| 5 | 1.4 | Business evaluation (NPV, etc.) | 2.38d | 2021-05-07 A | 2021-05-11 A | 4 | 100% |  | 2021-05-03 | 2021-05-05 | 2d? |  | Kurt Zollinger; Yukio Ashida | 38.08h | 38.08h | 3,046.4 | 2,576 | 3,046.4 |
| 6 | 2 | **Procurement** | 87.02d? | 2021-09-01 A | 2021-12-31 |  | 61% | 33.62d? | 2021-08-11 | 2021-11-26 | 77.12d? | 3.5d |  | 274.08h | 194.08h | 17,069.92 | 14,200 | 11,069.92 |
| 7 | 2.1 | Identify vendors | 4.5d | 2021-09-01 A | 2021-09-07 A | 26, 73 | 100% |  | 2021-08-11 | 2021-08-20 | 7d? |  | George Olmos; Norman Micheals | 72h | 72h | 3,528 | 2,800 | 3,528 |
| 8 | 2.2 | Develop and Issue RFQ | 3.88d | 2021-09-01 A | 2021-09-15 A | 73, 26 | 100% |  | 2021-08-11 | 2021-08-30 | 6d? |  | George Olmos; Norman Micheals | 62.08h | 62.08h | 3,041.92 | 2,400 | 3,041.92 |
| 9 | 2.3 | Issue sample (production equivalent) | 7.5d | 2021-09-21 A | 2021-10-01 A | 26, 7, 8, 74 | 100% |  | 2021-08-30 | 2021-09-06 | 5d? |  | Jovanna Soto | 60h | 60h | 4,500 | 3,000 | 4,500 |
| 10 | 2.4 | Assess RFQ responses and select vendors | 10d? | 2021-12-17 | 2021-12-31 | 78, 14 |  |  | 2021-11-12 | 2021-11-26 | 10d? | 3.5d | Jovanna Soto | 80h |  | 6,000 | 6,000 |  |
| 11 | 3 | **Supplier Quality** | 54.64d? | 2021-10-01 A | 2021-12-17 |  | 73% | 14.66d? | 2021-09-06 | 2021-10-28 | 38d? | 0d |  | 298.08h | 218.08h | 21,396.72 | 16,960 | 15,396.72 |
| 12 | 3.1 | Perform supplier process capability | 17.13d | 2021-10-01 A | 2021-10-26 A | 9 | 100% |  | 2021-09-06 | 2021-09-15 | 7d? |  | Tom Bechur | 137.04h | 137.04h | 9,318.72 | 6,608 | 9,318.72 |
| 13 | 3.2 | Approve sample parts | 10.13d | 2021-10-26 A | 2021-11-09 A | 12, 75 | 100% |  | 2021-09-15 | 2021-09-27 | 8d? |  | Jovanna Soto | 81.04h | 81.04h | 6,078 | 4,352 | 6,078 |
| 14 | 3.3 | Qualify Supplier | 10d? | 2021-12-03 | 2021-12-17 | 77, 13 |  |  | 2021-10-14 | 2021-10-28 | 10d? | 0d | Jovanna Soto | 80h |  | 6,000 | 6,000 |  |
| 15 | 4 | **Design** | 51.51d | 2021-05-11 A | 2021-07-21 A |  | 100% |  | 2021-05-05 | 2021-07-09 | 46.5d? |  |  | 589.12h | 589.12h | 34,021.68 | 22,344 | 34,021.68 |
| 16 | 4.1 | Design and development plan | 3.88d | 2021-05-11 A | 2021-05-17 A | 5, 69 | 100% |  | 2021-05-05 | 2021-05-10 | 3d? |  | Kelly Sauseda; Lance Portier | 62.08h | 62.08h | 3,585.12 | 2,352 | 3,585.12 |
| 17 | 4.2 | Design specs. | 13.75d | 2021-05-17 A | 2021-06-04 A | 16 | 100% |  | 2021-05-10 | 2021-05-25 | 11d? |  | Kelly Sauseda; Lance Portier | 220h | 220h | 12,705 | 8,624 | 12,705 |
| 18 | 4.3 | Identify testing requirements | 6.25d | 2021-06-04 A | 2021-06-14 A | 17, 70, 50 | 100% |  | 2021-05-25 | 2021-06-01 | 5d? |  | Kelly Sauseda; Lance Portier | 100h | 100h | 5,775 | 3,920 | 5,775 |
| 19 | 4.4 | Risk analysis | 7.06d | 2021-06-14 A | 2021-06-23 A | 18 | 100% |  | 2021-06-01 | 2021-06-08 | 5d? |  | Kelly Sauseda; Lance Portier | 112.96h | 112.96h | 6,523.44 | 3,920 | 6,523.44 |
| 20 | 4.5 | Design labeling | 3.25d | 2021-07-14 A | 2021-07-19 A | 19, 71 | 100% |  | 2021-07-02 | 2021-07-07 | 2.5d? |  | Kelly Sauseda; Lance Portier | 52h | 52h | 3,003 | 1,960 | 3,003 |
| 21 | 4.6 | Approve design | 2.63d | 2021-07-19 A | 2021-07-21 A | 20 | 100% |  | 2021-07-07 | 2021-07-09 | 2d? |  | Kelly Sauseda; Lance Portier | 42.08h | 42.08h | 2,430.12 | 1,568 | 2,430.12 |
| 22 | 5 | **Engineering** | 103.15d? | 2021-07-21 A | 2021-12-14 |  | 85% | 15.5d? | 2021-07-09 | 2021-11-09 | 87.62d? | 0d |  | 610.08h | 554.08h | 38,035.52 | 45,988 | 34,227.52 |
| 23 | 5.1 | Initial engineering specs. | 2.88d | 2021-07-21 A | 2021-07-26 A | 21 | 100% |  | 2021-07-09 | 2021-07-13 | 2.5d? |  | Tom Bechur; Darryl Sandefur | 46.08h | 46.08h | 2,833.92 | 2,460 | 2,833.92 |
| 24 | 5.2 | Design verification activities | 4.19d | 2021-08-09 A | 2021-08-13 A | 23, 72 | 100% |  | 2021-07-21 | 2021-07-27 | 3.5d? |  | Tom Bechur; Darryl Sandefur | 67.04h | 67.04h | 4,122.96 | 3,444 | 4,122.96 |
| 25 | 5.3 | Verification design review | 2.31d | 2021-08-13 A | 2021-08-17 A | 24 | 100% |  | 2021-07-27 | 2021-07-29 | 2d? |  | Tom Bechur; Darryl Sandefur | 36.96h | 36.96h | 2,273.04 | 1,968 | 2,273.04 |
| 26 | 5.4 | Release pre-production specifications | 6d | 2021-08-17 A | 2021-08-25 A | 25 | 100% |  | 2021-07-29 | 2021-08-05 | 5d? |  | Tom Bechur; Darryl Sandefur | 96h | 96h | 5,904 | 4,920 | 5,904 |
| 27 | 5.5 | Build functional model | 11.25d | 2021-09-01 A | 2021-09-16 A | 26, 73 | 100% |  | 2021-08-11 | 2021-08-24 | 9d? |  | Tom Bechur; Darryl Sandefur | 180h | 180h | 11,070 | 8,856 | 11,070 |
| 28 | 5.6 | Design validation activities | 3.06d | 2021-10-26 A | 2021-11-16 A | 75, 27, 12 | 100% |  | 2021-09-15 | 2021-09-22 | 5d? |  | Darryl Sandefur; Jovanna Soto | 48.96h | 48.96h | 3,182.4 | 2,200 | 3,182.4 |
| 29 | 5.7 | Validation design review | 4.75d | 2021-11-19 A | 2021-11-25 A | 28, 76 | 100% |  | 2021-10-06 | 2021-10-08 | 2d? |  | Tom Bechur | 38h | 38h | 2,584 | 1,968 | 2,584 |
| 30 | 5.8 | Approve model design | 5.13d | 2021-11-25 A | 2021-12-03 A | 29 | 100% |  | 2021-10-08 | 2021-10-12 | 2d? |  | Darryl Sandefur | 41.04h | 41.04h | 2,257.2 | 1,968 | 2,257.2 |
| 31 | 5.9 | Design transfer activities | 7d? | 2021-12-03 | 2021-12-14 | 30, 36, 77 |  |  | 2021-10-14 | 2021-11-09 | 18.5d? | 0d | Tom Bechur | 56h |  | 3,808 | 18,204 |  |

| ID | WBS | Task | Duration | Start | Finish | Predecessors | Complete | Remaining | Baseline start | Baseline finish | Baseline duration | Total slack | Resources | Work | Actual work | Cost | Baseline cost | Actual cost |
| --- | --- | --- | --- | --- | --- | --- | --- | --- | --- | --- | --- | --- | --- | --- | --- | --- | --- | --- |
| 32 | 6 | **Engineering Quality** | 77.02d? | 2021-09-01 A | 2021-12-17 |  | 94% | 4.79d? | 2021-08-11 | 2021-11-12 | 67.12d? | 0d |  | 386.08h | 362.08h | 25,816 | 21,472 | 23,476 |
| 33 | 6.1 | Evaluate design specifications | 14.88d | 2021-09-01 A | 2021-09-21 A | 73, 26 | 100% |  | 2021-08-11 | 2021-08-25 | 10d? |  | Jovanna Soto | 119.04h | 119.04h | 8,928 | 6,000 | 8,928 |
| 34 | 6.2 | Develop testing protocol for prototype | 10.25d | 2021-09-21 A | 2021-10-06 A | 26, 33, 74 | 100% |  | 2021-08-30 | 2021-09-09 | 8d? |  | Darryl Sandefur | 82h | 82h | 4,510 | 3,520 | 4,510 |
| 35 | 6.3 | Test prototype | 12.75d | 2021-10-26 A | 2021-11-12 A | 75, 34, 27, 12 | 100% |  | 2021-09-15 | 2021-09-29 | 10d? |  | Darryl Sandefur | 102h | 102h | 5,610 | 6,000 | 5,610 |
| 36 | 6.4 | Evaluate results of tests and identify weaknesses | 7.38d | 2021-11-19 A | 2021-11-30 A | 76, 35 | 100% |  | 2021-10-06 | 2021-10-14 | 6d? |  | Jovanna Soto | 59.04h | 59.04h | 4,428 | 3,600 | 4,428 |
| 37 | 6.5 | Product release meetings | 3d? | 2021-12-14 | 2021-12-17 | 31, 36, 30 |  |  | 2021-11-09 | 2021-11-12 | 3d? | 0d | Yukio Ashida | 24h |  | 2,340 | 2,352 |  |
| 38 | 7 | **Manufacturing** | 73.01d? | 2021-10-26 A | 2022-02-04 |  | 30% | 51.24d? | 2021-09-15 | 2022-01-03 | 78d? | 0d |  | 473.04h | 141.04h | 26,190.72 | 22,600 | 9,590.72 |
| 39 | 7.1 | Process engineering plan | 17.63d | 2021-10-26 A | 2021-11-19 A | 27, 12, 75 | 100% |  | 2021-09-15 | 2021-10-06 | 15d? |  | Tom Bechur | 141.04h | 141.04h | 9,590.72 | 6,000 | 9,590.72 |
| 40 | 7.2 | Develop production plan | 6d? | 2021-12-03 | 2021-12-13 | 77, 36, 29, 39 |  |  | 2021-10-14 | 2021-10-22 | 6d? | 4d | Operations Specialist | 48h |  | 2,400 | 2,400 |  |
| 41 | 7.3 | Develop production control plan | 8.5d? | 2021-12-17 | 2021-12-29 | 40, 14, 78 |  |  | 2021-11-12 | 2021-11-25 | 8.5d? | 0d | Operations Specialist | 68h |  | 3,400 | 3,400 |  |
| 42 | 7.4 | Approve production parts | 5d? | 2021-12-29 | 2022-01-05 | 41 |  |  | 2021-11-25 | 2021-12-02 | 5d? | 0d | Operations Specialist | 40h |  | 2,000 | 2,000 |  |
| 43 | 7.5 | Contracting for deliveries | 8d? | 2022-01-05 | 2022-01-17 | 42, 10 |  |  | 2021-12-02 | 2021-12-14 | 8d? | 0d | Operations Specialist | 64h |  | 3,200 | 3,200 |  |
| 44 | 7.6 | Submit production purchase order | 2d? | 2022-01-17 | 2022-01-19 | 43, 79 |  |  | 2021-12-14 | 2021-12-16 | 2d? | 0d | Operations Specialist | 16h |  | 800 | 800 |  |
| 45 | 7.7 | Production pilot test | 5d? | 2022-01-19 | 2022-01-26 | 44, 37 |  |  | 2021-12-16 | 2021-12-23 | 5d? | 0d | Operations Specialist | 40h |  | 2,000 | 2,000 |  |
| 46 | 7.8 | Debugging production system | 4d? | 2022-01-26 | 2022-02-01 | 45 |  |  | 2021-12-23 | 2021-12-29 | 4d? | 0d | Operations Specialist | 32h |  | 1,600 | 1,600 |  |
| 47 | 7.9 | Production release | 3d? | 2022-02-01 | 2022-02-04 | 46 |  |  | 2021-12-29 | 2022-01-03 | 3d? | 0d | Operations Specialist | 24h |  | 1,200 | 1,200 |  |
| 48 | 8 | **Commercialization** | 196.16d? | 2021-05-11 A | 2022-02-09 |  | 96% | 7.98d? | 2021-05-05 | 2022-01-06 | 175.62d? | 0d |  | 680.08h | 656.08h | 55,351.4 | 49,784 | 53,851.4 |
| 49 | 8.1 | Develop preliminary marketing plan | 2.81d | 2021-05-11 A | 2021-05-14 A | 5, 69 | 100% |  | 2021-05-05 | 2021-05-10 | 2.5d? |  | Kurt Zollinger; Yukio Ashida | 44.96h | 44.96h | 3,596.8 | 3,220 | 3,596.8 |
| 50 | 8.2 | Develop marketing program | 8.44d | 2021-05-14 A | 2021-05-26 A | 49 | 100% |  | 2021-05-10 | 2021-05-19 | 7.5d? |  | Kurt Zollinger; Yukio Ashida | 135.04h | 135.04h | 10,803.2 | 9,660 | 10,803.2 |
| 51 | 8.3 | Train sales team | 24.88d | 2021-06-04 A | 2021-07-08 A | 50, 70 | 100% |  | 2021-05-25 | 2021-06-24 | 22d? |  | Kurt Zollinger | 199.04h | 199.04h | 12,440 | 11,088 | 12,440 |
| 52 | 8.4 | Advertising campaign | 31.38d | 2021-06-04 A | 2021-07-19 A | 70, 50 | 100% |  | 2021-05-25 | 2021-07-02 | 28d? |  | Yukio Ashida | 251.04h | 251.04h | 24,476.4 | 21,952 | 24,476.4 |
| 53 | 8.5 | Show functional model at trade show | 3.25d | 2021-11-01 A | 2021-11-04 A | 50, 75, 12, 27 | 100% |  | 2021-09-20 | 2021-09-23 | 3d? |  | Yukio Ashida | 26h | 26h | 2,535 | 2,352 | 2,535 |
| 54 | 8.6 | Product launch | 3d? | 2022-02-04 | 2022-02-09 | 47, 51, 52, 53 |  |  | 2022-01-03 | 2022-01-06 | 3d? | 0d | Kurt Zollinger | 24h |  | 1,500 | 1,512 |  |
| 55 | 9 | **Project Management** | 218.42d? | 2021-03-31 A | 2022-01-31 |  | 78% | 47.54d? | 2021-03-31 | 2021-12-28 | 194.12d? | 7d |  | 1335.12h | 1111.12h | 100,322.2 | 83,236 | 86,302.2 |
| 56 | 9.1 | Project Management Period 1 | 18.06d | 2021-03-31 A | 2021-04-26 A |  | 100% |  | 2021-03-31 | 2021-04-16 | 12.5d? |  | Tom Bechur; Darryl Sandefur | 288.96h | 288.96h | 17,771.04 | 12,300 | 17,771.04 |
| 57 | 9.2 | Project Management Period 2 | 10.06d | 2021-05-11 A | 2021-05-25 A | 56, 69 | 100% |  | 2021-05-05 | 2021-05-14 | 7d? |  | Tom Bechur; Darryl Sandefur | 160.96h | 160.96h | 9,899.04 | 6,888 | 9,899.04 |
| 58 | 9.3 | Project Management Period 3 | 10.13d | 2021-06-04 A | 2021-06-18 A | 70, 57 | 100% |  | 2021-05-25 | 2021-06-03 | 7d? |  | Tom Bechur; Darryl Sandefur | 162.08h | 162.08h | 9,967.92 | 6,888 | 9,967.92 |
| 59 | 9.4 | Project Management Period 4 | 14.63d | 2021-07-19 A | 2021-08-09 A | 58, 71 | 100% |  | 2021-07-02 | 2021-07-21 | 13d? |  | Yukio Ashida | 117.04h | 117.04h | 11,411.4 | 10,192 | 11,411.4 |
| 60 | 9.5 | Project Management Period 5 | 17d | 2021-08-09 A | 2021-09-01 A | 72, 59 | 100% |  | 2021-07-21 | 2021-08-11 | 15d? |  | Yukio Ashida | 136h | 136h | 13,260 | 11,760 | 13,260 |
| 61 | 9.6 | Project Management Period 6 | 10.25d | 2021-09-01 A | 2021-09-15 A | 60, 73 | 100% |  | 2021-08-11 | 2021-08-24 | 9d? |  | Yukio Ashida | 82h | 82h | 7,995 | 7,056 | 7,995 |
| 62 | 9.7 | Project Management Period 7 | 12.5d | 2021-09-21 A | 2021-10-08 A | 74, 61 | 100% |  | 2021-08-30 | 2021-09-14 | 11d? |  | Yukio Ashida | 100h | 100h | 9,750 | 8,624 | 9,750 |
| 63 | 9.8 | Project Management Period 8 | 3.38d | 2021-10-26 A | 2021-10-29 A | 62, 75 | 100% |  | 2021-09-15 | 2021-09-20 | 3d? |  | Yukio Ashida | 27.04h | 27.04h | 2,636.4 | 2,352 | 2,636.4 |
| 64 | 9.9 | Project Management Period 9 | 4.63d | 2021-11-19 A | 2021-11-25 A | 76, 63 | 100% |  | 2021-10-06 | 2021-10-12 | 4d? |  | Yukio Ashida | 37.04h | 37.04h | 3,611.4 | 3,136 | 3,611.4 |
| 65 | 9.10 | Project Management Period 10 | 5d? | 2021-12-03 | 2021-12-10 | 64, 77 |  |  | 2021-10-14 | 2021-10-21 | 5d? | 5d | Yukio Ashida | 40h |  | 3,900 | 3,920 |  |
| 66 | 9.11 | Project Management Period 11 | 13d? | 2021-12-17 | 2022-01-05 | 78, 65 |  |  | 2021-11-12 | 2021-12-01 | 13d? | 8.5d | Darryl Sandefur | 104h |  | 5,720 | 5,720 |  |
| 67 | 9.12 | Project Management Period 12 | 10d? | 2022-01-17 | 2022-01-31 | 66, 79 |  |  | 2021-12-14 | 2021-12-28 | 10d? | 7d | Darryl Sandefur | 80h |  | 4,400 | 4,400 |  |

| ID | WBS | Task | Type | Duration | Start | Finish | Predecessors | Baseline start | Baseline finish | Baseline duration | Total slack |
| --- | --- | --- | --- | --- | --- | --- | --- | --- | --- | --- | --- |
| 68 | 10 | **Milestones** |  | 196.16d? | 2021-05-11 | 2022-02-09 |  | 2021-05-05 | 2022-01-06 | 175.62d? | 0d |
| 69 | 10.1 | Milestone 1 | milestone | 0d? | 2021-05-11 | 2021-05-11 | 56, 5 | 2021-05-05 | 2021-05-05 | 0d? | 167.75d |
| 70 | 10.2 | Milestone 2 | milestone | 0d? | 2021-06-04 | 2021-06-04 | 17, 50, 57 | 2021-05-25 | 2021-05-25 | 0d? | 155.13d |
| 71 | 10.3 | Milestone 3 | milestone | 0d? | 2021-07-19 | 2021-07-19 | 58, 52, 51, 19 | 2021-07-02 | 2021-07-02 | 0d? | 123.75d |
| 72 | 10.4 | Milestone 4 | milestone | 0d? | 2021-08-09 | 2021-08-09 | 23, 59 | 2021-07-21 | 2021-07-21 | 0d? | 111.12d |
| 73 | 10.5 | Milestone 5 | milestone | 0d? | 2021-09-01 | 2021-09-01 | 60, 26 | 2021-08-11 | 2021-08-11 | 0d? | 96.38d |
| 74 | 10.6 | Milestone 6 | milestone | 0d? | 2021-09-21 | 2021-09-21 | 27, 33, 8, 7, 61 | 2021-08-30 | 2021-08-30 | 0d? | 94.13d |
| 75 | 10.7 | Milestone 7 | milestone | 0d? | 2021-10-26 | 2021-10-26 | 62, 12, 34 | 2021-09-15 | 2021-09-15 | 0d? | 72.13d |
| 76 | 10.8 | Milestone 8 | milestone | 0d? | 2021-11-19 | 2021-11-19 | 28, 39, 13, 63, 53, 35 | 2021-10-06 | 2021-10-06 | 0d? | 58.38d |
| 77 | 10.9 | Milestone 9 | milestone | 0d? | 2021-12-03 | 2021-12-03 | 64, 36, 30 | 2021-10-14 | 2021-10-14 | 0d? | 0d |
| 78 | 10.10 | Milestone 10 | milestone | 0d? | 2021-12-17 | 2021-12-17 | 40, 37, 14, 65 | 2021-11-12 | 2021-11-12 | 0d? | 0d |
| 79 | 10.11 | Milestone 11 | milestone | 0d? | 2022-01-17 | 2022-01-17 | 66, 43 | 2021-12-14 | 2021-12-14 | 0d? | 0d |
| 80 | 10.12 | Milestone 12 | milestone | 0d? | 2022-02-09 | 2022-02-09 | 67, 54 | 2022-01-06 | 2022-01-06 | 0d? | 0d |
